# WebQuest1.0

Schedule from MS Project, 2019-09-02 to 2020-04-30, status date 2019-09-01, costs in €.

## Calendars

- Estándar: Mon-Fri 09:00-13:00, 15:00-19:00; Sat-Sun off.

## Resources

| Resource | Rate |
| --- | --- |
| Experto Big Data | 20.62 |
| Matemático | 12.5 |
| DBA | 13.12 |
| Programador1 | 8.75 |
| Programador2 | 10 |
| Analista | 15.62 |
| CUENTA DROPBOX | 540 |
| TERMINAL | 273 |
| SERVIDOR | 701.65 |
| Jefe De Proyectos | 31.25 |
| Experto en métricas | 11.25 |
| Experto en herramientas | 11.25 |
| Programador 3 | 9.38 |
| AnalistaSubcontrata | 12.5 |
| EmpresaSubcontrata | 9 |

## Schedule

| ID | WBS | Task | Type | Duration | Start | Finish | Predecessors | Total slack | Free slack | Constraint | Resources | Work | Cost |
| --- | --- | --- | --- | --- | --- | --- | --- | --- | --- | --- | --- | --- | --- |
| 1 | 1 | **WebQuest** |  | 173.33d | 2019-09-02 | 2020-04-30 |  | 0d |  |  |  | 1986h | 24,162.17 |
| 2 | 1.1 | **Análisis Preliminar** |  | 32d | 2019-09-02 | 2019-10-15 |  | 0.5d |  |  |  | 296h | 4,020 |
| 3 | 1.1.1 | Definición del sistema |  | 96h | 2019-09-02 | 2019-09-17 |  | 0.5d | 0d | start no earlier than 2019-09-02 | Analista [50%]; Experto en métricas [50%] | 96h | 1,290 |
| 4 | 1.1.2 | Establecimiento de los requisitos |  | 48h | 2019-09-18 | 2019-09-25 | 3 | 0.5d | 0d |  | Analista [50%]; Experto en herramientas [50%] | 48h | 645 |
| 5 | 1.1.3 | **Análisis de Casos de Uso** |  | 4d | 2019-09-25 | 2019-10-01 |  | 0.5d |  |  |  | 72h | 1,000 |
| 6 | 1.1.3.1 | Identificar Actores |  | 16h | 2019-09-25 | 2019-09-27 | 4 | 153.33d |  |  | Analista; AnalistaSubcontrata | 16h | 200 |
| 7 | 1.1.3.2 | Identificar Casos de Uso |  | 24h | 2019-09-26 | 2019-09-30 | 4 | 152.33d |  |  | AnalistaSubcontrata | 24h | 300 |
| 8 | 1.1.3.3 | Refinar el DCU con relaciones de uso y extensión |  | 32h | 2019-09-26 | 2019-10-01 | 4 | 0.5d | 0d |  | Analista | 32h | 500 |
| 9 | 1.1.4 | Análisis de las clases |  | 48h | 2019-10-02 | 2019-10-09 | 8 | 0.5d | 0d |  | Analista [50%]; Programador1 [50%] | 48h | 585 |
| 10 | 1.1.5 | Análisis de Consistencia |  | 32h | 2019-10-10 | 2019-10-15 | 9 | 0.5d | 0d |  | Analista | 32h | 500 |
| 11 | 1.1.6 | Aprobación del análisis | milestone | 0h | 2019-10-15 | 2019-10-15 | 10 | 0.5d | 0d |  | Analista [10%]; Jefe De Proyectos [90%] |  |  |
| 12 | 1.2 | **Desarrollo Aplicación** |  | 56.25d | 2019-10-16 | 2020-01-02 |  | 0.5d |  |  |  | 928h | 10,408.12 |
| 13 | 1.2.1 | **Diseño Vista** |  | 22d | 2019-10-16 | 2019-11-14 |  | 15.75d |  |  |  | 240h | 2,415 |
| 14 | 1.2.1.1 | Estudio del diseño |  | 48h | 2019-10-16 | 2019-10-23 | 11 | 15.75d | 0d |  | Analista [50%]; Programador1 [50%] | 48h | 585 |
| 15 | 1.2.1.2 | Definición de la arquitectura |  | 32h | 2019-10-24 | 2019-10-29 | 14 | 15.75d | 0d |  | Programador1 [50%]; Analista [50%] | 32h | 390 |
| 16 | 1.2.1.3 | Modelo de Presentación |  | 64h | 2019-10-30 | 2019-11-08 | 15 | 123.33d |  |  | Programador1 | 64h | 560 |
| 17 | 1.2.1.4 | Modelo de Navegación |  | 64h | 2019-10-30 | 2019-11-08 | 15 | 15.75d | 0d |  | Programador 3 | 64h | 600 |
| 18 | 1.2.1.5 | Modelo Contenidos |  | 32h | 2019-11-11 | 2019-11-14 | 17 | 15.75d | 0d |  | Programador1 | 32h | 280 |
| 19 | 1.2.1.6 | Primer prototipo | milestone | 0h | 2019-11-14 | 2019-11-14 | 18 | 15.75d | 0d |  | Analista [50%]; Programador1 [50%] |  |  |
| 20 | 1.2.2 | **Desarrollo Vista** |  | 19d | 2019-11-15 | 2019-12-11 |  | 15.75d |  |  |  | 152h | 1,330 |
| 21 | 1.2.2.1 | Codificación de la página |  | 64h | 2019-11-15 | 2019-11-26 | 19 | 15.75d | 0d |  | Programador1 | 64h | 560 |
| 22 | 1.2.2.2 | Codificación Scripts |  | 56h | 2019-11-27 | 2019-12-05 | 21 | 15.75d | 0d |  | Programador1 | 56h | 490 |
| 23 | 1.2.2.3 | Integración del Sistema |  | 32h | 2019-12-06 | 2019-12-11 | 22 | 15.75d | 0d |  | Programador1 | 32h | 280 |
| 24 | 1.2.2.4 | Aprobación del sistema | milestone | 0d | 2019-12-11 | 2019-12-11 | 23 | 15.75d | 15.25d |  |  |  |  |

| ID | WBS | Task | Type | Duration | Start | Finish | Predecessors | Total slack | Free slack | Constraint | Resources | Work | Cost |
| --- | --- | --- | --- | --- | --- | --- | --- | --- | --- | --- | --- | --- | --- |
| 25 | 1.2.3 | **Programación modelo** |  | 56.25d | 2019-10-16 | 2020-01-02 |  | 0.5d |  |  |  | 536h | 6,663.12 |
| 26 | 1.2.3.1 | Estudio modelo |  | 74h | 2019-10-16 | 2019-10-29 | 11 | 0.5d | 0d |  | Matemático [50%]; Experto Big Data [50%] | 74h | 1,225.62 |
| 27 | 1.2.3.2 | Formulación estadística |  | 120h | 2019-10-29 | 2019-11-19 | 26 | 0.5d | 0d |  | Matemático | 120h | 1,500 |
| 28 | 1.2.3.3 | Documentación estadística |  | 120h | 2019-11-19 | 2019-12-10 | 27 | 0.5d | 0d |  | Matemático | 120h | 1,500 |
| 29 | 1.2.3.4 | Entrega documentación estadística | milestone | 0h | 2019-12-10 | 2019-12-10 | 28 | 102.08d |  |  |  |  |  |
| 30 | 1.2.3.5 | Codificación Scripts |  | 88h | 2019-12-10 | 2019-12-25 | 28 | 0.5d | 0d |  | Programador2 [50%]; Matemático [50%] | 88h | 990 |
| 31 | 1.2.3.6 | Codificación herramientas visuales |  | 86h | 2019-12-10 | 2019-12-24 | 28 | 0.75d | 0.25d |  | Matemático [50%]; Programador2 [50%] | 86h | 967.5 |
| 32 | 1.2.3.7 | Integración con los sistemas internos de la aplicación |  | 48h | 2019-12-25 | 2020-01-02 | 31, 30 | 0.5d | 0d |  | Programador2 | 48h | 480 |
| 33 | 1.2.3.8 | Aprobación del proyecto | milestone | 0d | 2020-01-02 | 2020-01-02 | 32 | 85.08d |  |  |  |  |  |
| 34 | 1.3 | **Implementación BD** |  | 37.25d | 2020-01-02 | 2020-02-24 |  | 0.5d |  |  |  | 298h | 4,888.12 |
| 35 | 1.3.1 | Analisis |  | 88h | 2020-01-02 | 2020-01-17 | 32, 24 | 0.5d | 0d |  | DBA [50%]; Experto Big Data [50%] | 88h | 1,485 |
| 36 | 1.3.2 | Diseño Conceptual |  | 90h | 2020-01-17 | 2020-02-03 | 35 | 0.5d | 0d |  | DBA [50%]; Experto Big Data [50%] | 90h | 1,518.75 |
| 37 | 1.3.3 | Esquema lógico no relacional |  | 30h | 2020-02-03 | 2020-02-07 | 36 | 0.5d | 0d |  | Experto Big Data | 30h | 618.75 |
| 38 | 1.3.4 | Diseño conceptual | milestone | 0d | 2020-02-07 | 2020-02-07 | 37 | 59.08d |  |  |  |  |  |
| 39 | 1.3.5 | Desarrollo de la Base de datos |  | 60h | 2020-02-07 | 2020-02-18 | 37 | 0.5d | 0d |  | Experto Big Data [50%]; Programador2 [50%] | 60h | 918.75 |
| 40 | 1.3.6 | Procedimientos y funciones |  | 30h | 2020-02-18 | 2020-02-24 | 39 | 0.5d | 0d |  | DBA [50%]; Programador2 [50%] | 30h | 346.88 |
| 41 | 1.3.7 | Aprobación de la implementación | milestone | 0d | 2020-02-24 | 2020-02-24 | 40 | 47.83d |  |  |  |  |  |
| 42 | 1.4 | **Integración de la BD con el sistema** |  | 14d | 2020-02-24 | 2020-03-13 |  | 0.5d |  |  |  | 112h | 1,510 |
| 43 | 1.4.1 | Integración con la vista |  | 32h | 2020-02-24 | 2020-02-28 | 40 | 0.5d | 0d |  | Analista [50%]; Programador1 [25%]; Experto Big Data [25%] | 32h | 485 |
| 44 | 1.4.2 | Integración con el modelo |  | 32h | 2020-02-28 | 2020-03-05 | 43 | 0.5d | 0d |  | Analista [50%]; Programador1 [25%]; Experto Big Data [25%] | 32h | 485 |
| 45 | 1.4.3 | Depuración del sistema |  | 32h | 2020-03-05 | 2020-03-11 | 44 | 0.5d | 0d |  | Analista [50%]; Programador1 [50%] | 32h | 390 |
| 46 | 1.4.4 | Demostración del sistema |  | 16h | 2020-03-11 | 2020-03-13 | 45 | 0.5d | 0d |  | Programador 3 | 16h | 150 |
| 47 | 1.4.5 | Aprobación de la integración | milestone | 0d | 2020-03-13 | 2020-03-13 | 46 | 0.5d |  |  |  |  |  |
| 48 | 1.5 | **Pruebas** |  | 28d | 2020-03-16 | 2020-04-22 | 47 | 0d |  |  |  | 224h | 2,136.25 |
| 49 | 1.5.1 | Pruebas Unitarias y de Integracion |  | 128h | 2020-03-16 | 2020-04-06 | 46 | 0d |  | finish no earlier than 2020-04-06 | Programador1 | 128h | 1,120 |
| 50 | 1.5.2 | Pruebas de Aceptación de Usuario |  | 48h | 2020-04-07 | 2020-04-14 | 49 | 0d |  |  | Programador1 | 48h | 420 |
| 51 | 1.5.3 | Gestión de las Modificaciones |  | 24h | 2020-04-15 | 2020-04-17 | 50 | 0d |  |  | Programador1 | 24h | 210 |
| 52 | 1.5.4 | Pruebas Finales |  | 24h | 2020-04-20 | 2020-04-22 | 51 | 0d |  |  | Programador1 [50%]; Analista [25%]; Jefe De Proyectos [25%] | 24h | 386.25 |
| 53 | 1.5.5 | Aprobación de las pruebas | milestone | 0d | 2020-04-22 | 2020-04-22 | 52 | 5.33d |  |  |  |  |  |

| ID | WBS | Task | Type | Duration | Start | Finish | Predecessors | Total slack | Resources | Work | Cost |
| --- | --- | --- | --- | --- | --- | --- | --- | --- | --- | --- | --- |
| 54 | 1.6 | **Entrega** |  | 5.33d | 2020-04-23 | 2020-04-30 |  | 0d |  | 128h | 1,199.67 |
| 55 | 1.6.1 | Instalación |  | 26.67h | 2020-04-23 | 2020-04-28 | 52 | 0d | Programador1 [50%]; DBA [50%]; EmpresaSubcontrata [200%] | 80h | 771.67 |
| 56 | 1.6.2 | Formación de los empleados |  | 16h | 2020-04-28 | 2020-04-30 | 55 | 0d | Programador1; EmpresaSubcontrata [200%] | 48h | 428 |
| 57 | 1.6.3 | Fin de la entrega | milestone | 0d | 2020-04-30 | 2020-04-30 | 56 | 0d |  |  |  |
